# 项目1.0.1

Schedule from MS Project, 2015-03-19 to 2015-07-01, 23 hours a day, A marks actual dates.
....

## Calendars

- 标准: Mon-Fri 08:00-12:00, 13:00-17:00; Sat-Sun off.

## Resources

| Resource |
| --- |
| 1.0.1 |
| 王斐 |
| 张晋卿 |
| 张振 |
| 李涵 |

## Schedule

| ID | WBS | Task | Type | Duration | Start | Finish | Predecessors | Complete | Actual start | Actual finish | Baseline start | Baseline finish | Baseline duration | Constraint | Resources | Work | Actual work |
| --- | --- | --- | --- | --- | --- | --- | --- | --- | --- | --- | --- | --- | --- | --- | --- | --- | --- |
| 1 | 1 | **项目确定及介绍** |  | 32h | 2015-03-19 08:00 | 2015-03-24 17:00 |  | 100% | 2015-03-19 00:00 | 2015-03-24 00:30 | 2015-03-19 08:00 | 2015-03-24 17:00 | 32h |  |  | 220h | 220h |
| 2 | 1.1 | 开会讨论 | manual | 1h | 2015-03-19 00:00 A | 2015-03-19 01:00 A |  | 100% |  |  | 2015-03-19 08:00 | 2015-03-19 09:00 | 1h |  | 李涵; 王斐; 张晋卿; 张振 | 4h | 4h |
| 3 | 1.2 | 调研linux文件系统 | manual | 30.5h | 2015-03-19 00:00 A | 2015-03-20 23:30 A | 2 | 100% |  |  | 2015-03-19 09:00 | 2015-03-23 09:00 | 16h |  | 李涵 | 30.5h | 30.5h |
| 4 | 1.3 | 调研高性能计算开源软件 | manual | 30.5h | 2015-03-19 00:00 A | 2015-03-20 23:30 A | 2 | 100% |  |  | 2015-03-19 09:00 | 2015-03-23 09:00 | 16h |  | 张振 | 37h | 37h |
| 5 | 1.4 | 调研数据处理开源软件 | manual | 30.5h | 2015-03-19 00:00 A | 2015-03-20 23:30 A | 2 | 100% |  |  | 2015-03-19 09:00 | 2015-03-23 09:00 | 16h |  | 张晋卿 | 37h | 37h |
| 6 | 1.5 | 调研CompCert编译器 | manual | 30.5h | 2015-03-19 00:00 A | 2015-03-20 23:30 A | 2 | 100% |  |  | 2015-03-19 09:00 | 2015-03-23 09:00 | 16h |  | 王斐 | 30.5h | 30.5h |
| 7 | 1.6 | 开会确定项目 | manual | 16h | 2015-03-21 00:00 A | 2015-03-21 17:00 A | 3, 4, 5, 6 | 100% |  |  | 2015-03-23 09:00 | 2015-03-23 10:00 | 1h |  | 李涵; 王斐; 张晋卿; 张振 | 64h | 64h |
| 8 | 1.7 | 材料准备 | manual | 4h | 2015-03-23 00:00 A | 2015-03-23 04:00 A | 7 | 100% |  |  | 2015-03-23 10:00 | 2015-03-23 14:00 | 3h |  | 李涵; 王斐; 张晋卿; 张振 | 16h | 16h |
| 9 | 1.8 | 制作PPT，准备课题介绍 | manual | 0.5h | 2015-03-24 00:00 A | 2015-03-24 00:30 A | 8 | 100% |  |  | 2015-03-24 08:00 | 2015-03-24 10:00 | 2h |  | 王斐; 张晋卿 | 1h | 1h |
| 10 | 2 | **CompCert C编译器开发计划书编写** |  | 24h | 2015-03-25 08:00 | 2015-03-27 17:00 | 1 | 100% | 2015-03-23 23:30 | 2015-03-28 04:00 | 2015-03-25 08:00 | 2015-03-27 17:00 | 24h |  |  | 76h | 76h |
| 11 | 2.1 | 上课 | manual | 3h | 2015-03-23 23:30 A | 2015-03-24 10:30 A |  | 100% |  |  | 2015-03-25 08:00 | 2015-03-25 11:00 | 3h |  | 李涵; 王斐; 张晋卿; 张振 | 12h | 12h |
| 12 | 2.2 | 开会总结问题并且讨论计划书编写 | manual | 4h | 2015-03-25 00:00 A | 2015-03-25 04:00 A | 11 | 100% |  |  | 2015-03-25 11:00 | 2015-03-25 14:00 | 2h |  | 李涵; 王斐; 张晋卿; 张振 | 16h | 16h |
| 13 | 2.3 | 编写Project | manual | 4h | 2015-03-25 00:00 A | 2015-03-25 04:00 A | 12 | 100% |  |  | 2015-03-25 14:00 | 2015-03-25 16:00 | 2h |  | 王斐; 张晋卿 | 8h | 8h |
| 14 | 2.4 | 阅读用户手册 | manual | 8h | 2015-03-25 00:00 A | 2015-03-25 08:00 A | 13 | 100% |  |  | 2015-03-25 16:00 | 2015-03-26 16:00 | 8h |  | 张晋卿 | 8h | 8h |
| 15 | 2.5 | 安装CompCert C编译器软件 | manual | 4h | 2015-03-26 00:00 A | 2015-03-26 04:00 A | 13 | 100% |  |  | 2015-03-25 16:00 | 2015-03-26 16:00 | 8h |  | 李涵; 张振 | 8h | 8h |
| 16 | 2.6 | 阅读并整理CompCert C源代码 | manual | 8h | 2015-03-27 00:00 A | 2015-03-27 08:00 A | 13 | 100% |  |  | 2015-03-25 16:00 | 2015-03-26 16:00 | 8h |  | 王斐 | 8h | 8h |
| 17 | 2.7 | 编写CompCert C开发计划书 | manual | 4h | 2015-03-28 00:00 A | 2015-03-28 04:00 A | 14, 15, 16 | 100% |  |  | 2015-03-26 16:00 | 2015-03-27 09:00 | 2h |  | 李涵; 王斐; 张晋卿; 张振 | 16h | 16h |
| 18 | 3 | **软件需求分析** |  | 56h | 2015-03-29 08:00 | 2015-04-05 17:00 | 10, 1 | 100% | 2015-03-30 00:00 | 2015-04-04 04:00 | 2015-03-29 08:00 | 2015-04-05 17:00 | 56h |  |  | 128h | 128h |
| 19 | 3.1 | 更新任务计划书 | manual | 6h | 2015-03-30 00:00 A | 2015-03-30 06:00 A |  | 100% |  |  | 2015-03-30 08:00 | 2015-03-30 10:00 | 2h | start no earlier than 2015-03-30 08:00 | 王斐; 张晋卿 | 12h | 12h |
| 20 | 3.2 | 开会讨论需求 | manual | 6h | 2015-03-31 00:00 A | 2015-03-31 06:00 A | 19 | 100% |  |  | 2015-03-30 10:00 | 2015-03-30 12:00 | 2h |  | 王斐; 张晋卿; 李涵; 张振 | 24h | 24h |
| 21 | 3.3 | 制作RUCM | manual | 6h | 2015-03-31 00:00 A | 2015-03-31 06:00 A | 20 | 100% |  |  | 2015-03-31 08:00 | 2015-03-31 17:00 | 8h |  | 王斐; 张振 | 12h | 12h |
| 22 | 3.4 | 编写软件需求规格说明书 | manual | 10h | 2015-04-01 00:00 A | 2015-04-01 10:00 A | 20 | 100% |  |  | 2015-03-31 08:00 | 2015-03-31 17:00 | 8h |  | 李涵; 张晋卿 | 20h | 20h |
| 23 | 3.5 | 上课 | manual | 3h | 2015-04-01 00:00 A | 2015-04-01 03:00 A |  | 100% |  |  | 2015-04-01 08:00 | 2015-04-01 11:00 | 3h |  | 王斐; 李涵; 张晋卿; 张振 | 12h | 12h |
| 24 | 3.6 | 开会分析出现的问题 | manual | 2h | 2015-04-02 00:00 A | 2015-04-02 02:00 A | 23 | 100% |  |  | 2015-04-02 08:00 | 2015-04-02 10:00 | 2h |  | 李涵; 王斐; 张晋卿; 张振 | 8h | 8h |
| 25 | 3.7 | 更改RUCM | manual | 8h | 2015-04-03 00:00 A | 2015-04-03 08:00 A | 24 | 100% |  |  | 2015-04-03 08:00 | 2015-04-03 17:00 | 8h |  | 李涵; 王斐; 张晋卿; 张振 | 32h | 32h |
| 26 | 3.8 | 制作检查单 | manual | 4h | 2015-04-04 00:00 A | 2015-04-04 04:00 A |  | 100% |  |  | 2015-04-05 17:00 | 2015-04-05 17:00 | 0h |  | 张晋卿; 张振 | 8h | 8h |

| ID | WBS | Task | Type | Duration | Start | Finish | Predecessors | Complete | Remaining | Actual start | Actual finish | Baseline start | Baseline finish | Baseline duration | Resources | Work | Actual work |
| --- | --- | --- | --- | --- | --- | --- | --- | --- | --- | --- | --- | --- | --- | --- | --- | --- | --- |
| 27 | 4 | **软件需求评审** |  | 16h | 2015-04-06 08:00 | 2015-04-07 17:00 | 18 | 100% |  | 2015-04-06 00:00 | 2015-04-07 01:00 | 2015-04-06 08:00 | 2015-04-07 17:00 | 16h |  | 10h | 10h |
| 28 | 4.1 | 对各组进行评审 | manual | 2h | 2015-04-06 00:00 A | 2015-04-06 02:00 A |  | 100% |  |  |  | 2015-04-06 08:00 | 2015-04-06 10:00 | 2h | 李涵; 王斐; 张晋卿; 张振 | 8h | 8h |
| 29 | 4.2 | 收集本小组出现的问题 | manual | 1h | 2015-04-07 00:00 A | 2015-04-07 01:00 A |  | 100% |  |  |  | 2015-04-07 08:00 | 2015-04-07 10:00 | 2h | 张晋卿; 张振 | 2h | 2h |
| 30 | 5 | **软件需求复评审** |  | 56h | 2015-04-08 08:00 | 2015-04-16 17:00 | 27 | 100% |  | 2015-04-08 00:00 | 2015-04-14 04:00 | 2015-04-08 08:00 | 2015-04-14 17:00 | 1.74d |  | 88h | 88h |
| 31 | 5.1 | 上课 | manual | 3h | 2015-04-08 00:00 A | 2015-04-08 03:00 A |  | 100% |  |  |  | 2015-04-08 08:00 | 2015-04-08 11:00 | 3h | 李涵; 王斐; 张振; 张晋卿 | 12h | 12h |
| 32 | 5.2 | 整理课堂问题 | manual | 2h | 2015-04-09 00:00 A | 2015-04-09 02:00 A | 31 | 100% |  |  |  | 2015-04-09 08:00 | 2015-04-09 10:00 | 2h | 张晋卿 | 2h | 2h |
| 33 | 5.3 | 修改RUCM | manual | 3h | 2015-04-11 00:00 A | 2015-04-11 03:00 A | 32 | 100% |  |  |  | 2015-04-10 08:00 | 2015-04-10 11:00 | 3h | 李涵; 王斐 | 6h | 6h |
| 34 | 5.4 | 修改软件需求规格说明书 | manual | 2h | 2015-04-11 00:00 A | 2015-04-11 02:00 A | 32 | 100% |  |  |  | 2015-04-10 08:00 | 2015-04-10 11:00 | 3h | 张晋卿; 张振 | 4h | 4h |
| 35 | 5.5 | 进行软件项目的评审 | manual | 12h | 2015-04-11 00:00 A | 2015-04-11 12:00 A | 33, 34 | 100% |  |  |  | 2015-04-10 11:00 | 2015-04-13 17:00 | 13h | 李涵; 王斐; 张晋卿; 张振 | 48h | 48h |
| 36 | 5.6 | 进行项目总结 | manual | 4h | 2015-04-14 00:00 A | 2015-04-14 04:00 A | 35 | 100% |  |  |  | 2015-04-14 08:00 | 2015-04-14 12:00 | 4h | 李涵; 王斐; 张晋卿; 张振 | 16h | 16h |
| 37 | 6 | **进度计划实验** |  | 48h | 2015-04-15 08:00 | 2015-04-22 17:00 |  | 100% |  | 2015-04-16 00:00 | 2015-04-21 01:00 | 2015-04-15 08:00 | 2015-04-22 23:30 | 2.37d |  | 32h | 32h |
| 38 | 6.1 | 开会讨论 | manual | 2h | 2015-04-16 00:00 A | 2015-04-16 02:00 A |  | 100% |  |  |  | 2015-04-16 08:00 | 2015-04-16 10:00 | 2h | 李涵; 王斐; 张晋卿; 张振 | 8h | 8h |
| 39 | 6.2 | 制定本周计划 | manual | 1h | 2015-04-16 00:00 A | 2015-04-16 01:00 A | 38 | 100% |  |  |  | 2015-04-16 10:00 | 2015-04-16 11:00 | 1h | 王斐; 张晋卿 | 2h | 2h |
| 40 | 6.3 | 整理问题清单 | manual | 2h | 2015-04-17 00:00 A | 2015-04-17 02:00 A | 38 | 100% |  |  |  | 2015-04-17 00:00 | 2015-04-17 02:00 | 2h | 王斐; 张晋卿 | 4h | 4h |
| 41 | 6.4 | 修改需求规格说明书与RUCM | manual | 4h | 2015-04-18 00:00 A | 2015-04-18 04:00 A | 38 | 100% |  |  |  | 2015-04-16 10:00 | 2015-04-16 15:00 | 4h | 张振; 李涵 | 8h | 8h |
| 42 | 6.5 | 统计以往时间，修改进度计划 | manual | 2h | 2015-04-18 00:00 A | 2015-04-18 02:00 A |  | 100% |  |  |  | 2015-04-16 13:00 | 2015-04-16 17:00 | 4h | 王斐; 张晋卿 | 4h | 4h |
| 43 | 6.6 | 增加数据字典 | manual | 1h | 2015-04-20 00:00 A | 2015-04-20 01:00 A |  | 100% |  |  |  | 2015-04-21 00:00 | 2015-04-21 02:00 | 2h | 李涵; 张振 | 2h | 2h |
| 44 | 6.7 | 完成项目进度评审 | manual | 1h | 2015-04-21 00:00 A | 2015-04-21 01:00 A |  | 100% |  |  |  | 2015-04-21 00:00 | 2015-04-21 02:00 | 2h | 李涵; 王斐; 张晋卿; 张振 | 4h | 4h |
| 45 | 7 | **软件测试** |  | 56h | 2015-04-23 08:00 | 2015-05-01 17:00 |  | 100% |  | 2015-04-24 00:00 | 2015-04-28 02:00 | 2015-04-23 08:00 | 2015-05-18 10:00 | 6d |  | 24h | 24h |
| 46 | 7.1 | 开会讨论测试任务 | manual | 2h | 2015-04-24 00:00 A | 2015-04-24 02:00 A |  | 100% |  |  |  | 2015-04-23 08:00 | 2015-04-23 10:00 | 2h | 李涵; 王斐; 张晋卿; 张振 | 8h | 8h |
| 47 | 7.2 | 设计测试用例 | manual | 2h | 2015-04-26 00:00 A | 2015-04-26 02:00 A | 46 | 100% |  |  |  | 2015-04-24 08:00 | 2015-04-24 17:00 | 8h | 王斐; 张振 | 4h | 4h |
| 48 | 7.3 | 编写测试需求规格说明书 | manual | 2h | 2015-04-26 00:00 A | 2015-04-26 02:00 A | 47 | 100% |  |  |  | 2015-04-27 08:00 | 2015-04-27 17:00 | 8h | 李涵; 张晋卿 | 4h | 4h |
| 49 | 7.4 | 编写实验六、七、八方案 | manual | 2h | 2015-04-28 00:00 A | 2015-04-28 02:00 A |  | 100% |  |  |  |  |  |  | 李涵; 王斐; 张晋卿; 张振 | 8h | 8h |
| 50 | 8 | **软件测试评审** |  | 56h | 2015-04-29 08:00 | 2015-05-07 17:00 | 45 | 50% | 28h | 2015-04-29 00:00 |  | 2015-04-29 08:00 | 2015-05-06 23:30 | 2.37d |  | 64h | 32h |
| 51 | 8.1 | 上课第8周课 | manual | 3h | 2015-04-29 00:00 A | 2015-04-29 03:00 A |  | 100% |  |  |  | 2015-04-29 08:00 | 2015-04-29 11:00 | 3h | 李涵; 王斐; 张晋卿; 张振 | 12h | 12h |
| 52 | 8.2 | 开会讨论测试需求规格的更改 | manual | 2h | 2015-05-01 00:00 A | 2015-05-01 02:00 A |  | 100% |  |  |  |  |  |  | 李涵; 张晋卿; 王斐; 张振 | 8h | 8h |
| 53 | 8.3 | 实验方案网上评审 | manual | 4h | 2015-05-02 00:00 | 2015-05-02 04:00 |  |  |  |  |  |  |  |  | 李涵; 王斐; 张晋卿; 张振 | 16h |  |
| 54 | 8.4 | 修订软件测试需求规格说明书 | manual | 3h | 2015-05-02 00:00 A | 2015-05-02 03:00 A |  | 100% |  |  |  | 2015-04-30 08:00 | 2015-04-30 17:00 | 8h | 李涵; 王斐; 张晋卿; 张振 | 12h | 12h |
| 55 | 8.5 | 进行软件测试规格说明书的网上评审 | manual | 4h | 2015-05-03 00:00 | 2015-05-03 04:00 |  |  |  |  |  | 2015-05-05 08:00 | 2015-05-05 17:00 | 0.35d | 张晋卿; 王斐; 李涵; 张振 | 16h |  |

| ID | WBS | Task | Type | Duration | Start | Finish | Predecessors | Complete | Actual start | Actual finish | Baseline start | Baseline finish | Baseline duration | Resources | Work | Actual work |
| --- | --- | --- | --- | --- | --- | --- | --- | --- | --- | --- | --- | --- | --- | --- | --- | --- |
| 56 | 9 | **软件测试复评审** |  | 56h | 2015-05-06 08:00 | 2015-05-14 17:00 | 50 | 100% | 2015-05-06 00:00 | 2015-05-13 04:00 | 2015-05-06 08:00 | 2015-05-12 17:00 | 1.74d |  | 34h | 34h |
| 57 | 9.1 | 上第9周课 | manual | 3h | 2015-05-06 00:00 A | 2015-05-06 03:00 A |  | 100% |  |  | 2015-05-06 08:00 | 2015-05-06 17:00 | 0.35d | 李涵; 张晋卿; 王斐; 张振 | 12h | 12h |
| 58 | 9.2 | 开会讨论测试需求规格说明书 | manual | 2h | 2015-05-08 00:00 A | 2015-05-08 02:00 A | 57 | 100% |  |  |  |  |  | 李涵; 王斐; 张晋卿; 张振 | 8h | 8h |
| 59 | 9.3 | 整理github资料 | manual | 4h | 2015-05-13 00:00 A | 2015-05-13 04:00 A |  | 100% |  |  |  |  |  | 王斐; 李涵 | 8h | 8h |
| 60 | 9.4 | 追踪mpp | manual | 3h | 2015-05-13 00:00 A | 2015-05-13 03:00 A |  | 100% |  |  |  |  |  | 张晋卿; 张振 | 6h | 6h |
| 61 | 10 | **软件测试需求完善** |  | 56h | 2015-05-14 00:00 A | 2015-05-21 17:00 |  | 100% |  | 2015-05-18 17:00 |  |  |  |  | 380h | 380h |
| 62 | 10.1 | 开会讨论这周任务 | manual | 2h | 2015-05-14 00:00 A | 2015-05-14 02:00 A |  | 100% |  |  |  |  |  | 李涵; 王斐; 张晋卿; 张振 | 8h | 8h |
| 63 | 10.2 | 完善需求规格说明书 | manual | 4h | 2015-05-14 00:00 A | 2015-05-14 04:00 A |  | 100% |  |  |  |  |  | 李涵; 王斐; 张晋卿; 张振 | 16h | 16h |
| 64 | 10.3 | github资料评审 | manual | 24h | 2015-05-15 00:00 A | 2015-05-18 17:00 A |  | 100% |  |  |  |  |  | 李涵; 王斐; 张晋卿; 张振 | 356h | 356h |
| 65 | 11 | **软件产品更新与展示** |  | 56h | 2015-05-20 00:00 | 2015-05-27 17:00 | 1, 10, 18, 27 |  |  |  | 2015-05-13 08:00 | 2015-05-19 17:00 | 1.74d |  | 12h |  |
| 66 | 11.1 | 上11周课 | manual | 3h | 2015-05-20 00:00 | 2015-05-20 03:00 |  |  |  |  | 2015-05-13 08:00 | 2015-05-13 17:00 | 0.35d | 李涵; 王斐; 张晋卿; 张振 | 12h |  |
| 67 | 12 | 综合实验分析 | manual | 4h | 2015-05-27 08:00 | 2015-05-27 12:00 |  |  |  |  | 2015-05-27 08:00 | 2015-06-02 17:00 | 1.74d |  |  |  |
| 68 | 13 | 综合实验总结 | manual | 4h | 2015-06-03 08:00 | 2015-06-03 12:00 | 67 |  |  |  | 2015-06-03 08:00 | 2015-06-09 17:00 | 1.74d |  |  |  |
| 69 | 14 | 软件进度计划与控制 | manual | 4h | 2015-06-19 08:00 | 2015-06-19 12:00 |  |  |  |  | 2015-06-19 08:00 | 2015-06-25 17:00 | 1.74d |  |  |  |
| 70 | 15 | 工作量估计与统计分析 | manual | 3h | 2015-06-25 08:00 | 2015-06-25 11:00 |  |  |  |  | 2015-06-25 08:00 | 2015-07-01 17:00 | 1.74d |  |  |  |
| 71 | 16 | 配置管理 | manual | 3h | 2015-07-01 08:00 | 2015-07-01 11:00 |  |  |  |  | 2015-07-01 08:00 | 2015-07-07 17:00 | 1.74d |  |  |  |
